# 02

How a schedule from MS Project changed from version to version. A marks actual dates.

## Version 1 (saved 2024-03-26, file 02.mpp)

Note of the change: 4 курс

| ID | WBS | Task | Duration | Start | Finish | Total float |
| --- | --- | --- | --- | --- | --- | --- |
| 1 | 1 | **Проект 1** | 15d | 2024-04-01 | 2024-04-19 | 0d |
| 2 |  | Начало реализации проекта | 0d | 2024-04-01 | 2024-04-01 | 15d |
| 3 |  | Программирование | 1d | 2024-04-01 | 2024-04-01 | 14d |
| 4 |  | Постановка задачи | 5d | 2024-04-01 | 2024-04-05 | 10d |
| 5 |  | Разработка интерфейса | 10d | 2024-04-01 | 2024-04-12 | 5d |
| 6 |  | Разработка модулей обработки данных | 15d | 2024-04-01 | 2024-04-19 | 0d |
| 7 |  | Разработка базы данных | 15d | 2024-04-01 | 2024-04-19 | 0d |
| 8 |  | Заполнение базы данных | 12d | 2024-04-01 | 2024-04-16 | 3d |
| 9 |  | Программирование завершено | 0d | 2024-04-01 | 2024-04-01 | 15d |
| 10 |  | Тестирование и отладка | 1d | 2024-04-01 | 2024-04-01 | 14d |
| 11 |  | Подготовка тестовых наборов данных | 5d | 2024-04-01 | 2024-04-05 | 10d |
| 12 |  | Тестирование и исправление ошибок | 15d | 2024-04-01 | 2024-04-19 | 0d |
| 13 |  | Отладка завершена | 0d | 2024-04-01 | 2024-04-01 | 15d |
| 14 |  | Разработка документации | 1d | 2024-04-01 | 2024-04-01 | 14d |
| 15 |  | Составление программной документации | 10d | 2024-04-01 | 2024-04-12 | 5d |
| 16 |  | Составление пользовательской документации | 15d | 2024-04-01 | 2024-04-19 | 0d |
| 17 |  | Конец проекта | 0d | 2024-04-01 | 2024-04-01 | 15d |

## Version 2 (saved 2024-03-26, file 03.mpp)

Note of the change: 4 курс

Last finish stays 2024-04-19.

Changed:

| ID | Task | Finish | Duration | Total float |
| --- | --- | --- | --- | --- |
| 3 | **Программирование** | 2024-04-01 → 2024-04-19 (+18d) | 1d → 15d | 14d → 0d |
| 10 | **Тестирование и отладка** | 2024-04-01 → 2024-04-19 (+18d) | 1d → 15d | 14d → 0d |
| 14 | **Разработка документации** | 2024-04-01 → 2024-04-19 (+18d) | 1d → 15d | 14d → 0d |

## Version 3 (saved 2024-03-26, file 04.mpp)

Note of the change: 4 курс

Last finish 2024-04-19 → 2024-06-20 (+62d).

Changed:

| ID | Task | Start | Finish | Duration | Total float | Predecessors |
| --- | --- | --- | --- | --- | --- | --- |
| 1 | **Проект 1** |  | 2024-04-19 → 2024-06-20 (+62d) | 15d → 56d |  |  |
| 3 | **Программирование** | 2024-04-01 → 2024-04-02 (+1d) | 2024-04-19 → 2024-05-17 (+28d) | 15d → 32d |  |  |
| 4 | Постановка задачи | 2024-04-01 → 2024-04-02 (+1d) | 2024-04-05 → 2024-04-08 (+3d) |  | 10d → 0d | none → 2FS+1d |
| 5 | Разработка интерфейса | 2024-04-01 → 2024-04-09 (+8d) | 2024-04-12 → 2024-04-22 (+10d) |  | 5d → 10d | none → 4 |
| 6 | Разработка модулей обработки данных | 2024-04-01 → 2024-04-23 (+22d) | 2024-04-19 → 2024-05-15 (+26d) |  | 0d → 10d | none → 5 |
| 7 | Разработка базы данных | 2024-04-01 → 2024-04-09 (+8d) | 2024-04-19 → 2024-04-29 (+10d) |  |  | none → 4 |
| 8 | Заполнение базы данных | 2024-04-01 → 2024-04-30 (+29d) | 2024-04-16 → 2024-05-17 (+31d) |  | 3d → 0d | none → 7 |
| 9 | Программирование завершено | 2024-04-01 → 2024-05-17 (+46d) | 2024-04-01 → 2024-05-17 (+46d) |  | 15d → 8d | none → 6, 8 |
| 10 | **Тестирование и отладка** | 2024-04-01 → 2024-05-13 (+42d) | 2024-04-19 → 2024-06-07 (+49d) | 15d → 20d | 0d → 8d |  |
| 11 | Подготовка тестовых наборов данных | 2024-04-01 → 2024-05-13 (+42d) | 2024-04-05 → 2024-05-17 (+42d) |  | 10d → 8d | none → 9FS-5d |
| 12 | Тестирование и исправление ошибок | 2024-04-01 → 2024-05-20 (+49d) | 2024-04-19 → 2024-06-07 (+49d) |  | 0d → 8d | none → 11 |
| 13 | Отладка завершена | 2024-04-01 → 2024-06-07 (+67d) | 2024-04-01 → 2024-06-07 (+67d) |  | 15d → 8d | none → 12 |
| 14 | **Разработка документации** | 2024-04-01 → 2024-05-16 (+45d) | 2024-04-19 → 2024-06-20 (+62d) | 15d → 25d |  |  |
| 15 | Составление программной документации | 2024-04-01 → 2024-05-16 (+45d) | 2024-04-12 → 2024-05-29 (+47d) |  | 5d → 0d | none → 8SS+10d |
| 16 | Составление пользовательской документации | 2024-04-01 → 2024-05-30 (+59d) | 2024-04-19 → 2024-06-20 (+62d) |  |  | none → 15 |
| 17 | Конец проекта | 2024-04-01 → 2024-06-20 (+80d) | 2024-04-01 → 2024-06-20 (+80d) |  | 15d → 0d | none → 16 |

## Version 4 (saved 2024-04-02, file 06.mpp)

Note of the change: 4 курс

Last finish stays 2024-06-20.

Changed:

| ID | Task | Other |
| --- | --- | --- |
| 3 | **Программирование** | resources none → Сервер базы данных |
| 4 | Постановка задачи | resources none → Аналитик; Ведущий программист |
| 5 | Разработка интерфейса | resources none → Ведущий программист; Программист 1 |
| 6 | Разработка модулей обработки данных | resources none → Программист 2; Программист 3 |
| 7 | Разработка базы данных | resources none → Аналитик; Программист 1 |
| 8 | Заполнение базы данных | resources none → Наборщики данных [200%] |
| 11 | Подготовка тестовых наборов данных | resources none → Программист 1; Программист 3 |
| 12 | Тестирование и исправление ошибок | resources none → Ведущий программист; Программист 2 |
| 14 | **Разработка документации** | resources none → Бумага [0.6%]; Картриджи для принтера [1.2%] |
| 15 | Составление программной документации | resources none → Технический писатель |
| 16 | Составление пользовательской документации | resources none → Технический писатель |

## Version 5 (saved 2024-04-02, file 07.mpp)

Note of the change: 4 курс

Last finish 2024-06-20 → 2024-07-04 (+14d).

Changed:

| ID | Task | Start | Finish | Duration | Total float |
| --- | --- | --- | --- | --- | --- |
| 1 | **Проект 1** |  | 2024-06-20 → 2024-07-04 (+14d) | 56d → 66d |  |
| 3 | **Программирование** |  | 2024-05-17 → 2024-06-05 (+19d) | 32d → 45d |  |
| 5 | Разработка интерфейса |  | 2024-04-22 → 2024-05-15 (+23d) | 10d → 20d | 10d → 0d |
| 6 | Разработка модулей обработки данных | 2024-04-23 → 2024-05-16 (+23d) | 2024-05-15 → 2024-06-05 (+21d) |  | 10d → 0d |
| 9 | Программирование завершено | 2024-05-17 → 2024-06-05 (+19d) | 2024-05-17 → 2024-06-05 (+19d) |  | 8d → 0d |
| 10 | **Тестирование и отладка** | 2024-05-13 → 2024-05-30 (+17d) | 2024-06-07 → 2024-07-04 (+27d) | 20d → 25d | 8d → 0d |
| 11 | Подготовка тестовых наборов данных | 2024-05-13 → 2024-05-30 (+17d) | 2024-05-17 → 2024-06-13 (+27d) | 5d → 10d | 8d → 0d |
| 12 | Тестирование и исправление ошибок | 2024-05-20 → 2024-06-14 (+25d) | 2024-06-07 → 2024-07-04 (+27d) |  | 8d → 0d |
| 13 | Отладка завершена | 2024-06-07 → 2024-07-04 (+27d) | 2024-06-07 → 2024-07-04 (+27d) |  | 8d → 0d |

## Version 6 (saved 2024-04-02, file 08.mpp)

Note of the change: 4 курс

Last finish 2024-07-04 → 2024-07-09 (+5d).

Added:

| ID | Task | Duration | Start | Finish | Constraint | Resources |
| --- | --- | --- | --- | --- | --- | --- |
| 18 | **Профилактика** | 55.12d | 2024-04-02 09:00 | 2024-06-25 12:00 |  |  |
| 19 | Профилактика 1 | 3h | 2024-04-02 09:00 | 2024-04-02 12:00 | start no earlier than 2024-04-02 09:00 | Специалист профилактики |
| 20 | Профилактика 2 | 3h | 2024-04-16 09:00 | 2024-04-16 12:00 | start no earlier than 2024-04-16 09:00 | Специалист профилактики |
| 21 | Профилактика 3 | 3h | 2024-04-30 09:00 | 2024-04-30 12:00 | start no earlier than 2024-04-30 09:00 | Специалист профилактики |
| 22 | Профилактика 4 | 3h | 2024-05-14 09:00 | 2024-05-14 12:00 | start no earlier than 2024-05-14 09:00 | Специалист профилактики |
| 23 | Профилактика 5 | 3h | 2024-05-28 09:00 | 2024-05-28 12:00 | start no earlier than 2024-05-28 09:00 | Специалист профилактики |
| 24 | Профилактика 6 | 3h | 2024-06-11 09:00 | 2024-06-11 12:00 | start no earlier than 2024-06-11 09:00 | Специалист профилактики |
| 25 | Профилактика 7 | 3h | 2024-06-25 09:00 | 2024-06-25 12:00 | start no earlier than 2024-06-25 09:00 | Специалист профилактики |

Changed:

| ID | Task | Start | Finish |
| --- | --- | --- | --- |
| 1 | **Проект 1** | 2024-04-01 → 2024-04-01 09:00 | 2024-07-04 → 2024-07-09 15:00 (+5d) |
| 2 | Начало реализации проекта | 2024-04-01 → 2024-04-01 09:00 | 2024-04-01 → 2024-04-01 09:00 |
| 3 | **Программирование** | 2024-04-02 → 2024-04-02 09:00 | 2024-06-05 → 2024-06-07 17:00 (+2d) |
| 4 | Постановка задачи | 2024-04-02 → 2024-04-02 09:00 | 2024-04-08 → 2024-04-09 12:00 (+1d) |
| 5 | Разработка интерфейса | 2024-04-09 → 2024-04-09 12:00 | 2024-05-15 → 2024-05-17 13:00 (+2d) |
| 6 | Разработка модулей обработки данных | 2024-05-16 → 2024-05-17 14:00 (+1d) | 2024-06-05 → 2024-06-07 17:00 (+2d) |
| 7 | Разработка базы данных | 2024-04-09 → 2024-04-09 12:00 | 2024-04-29 → 2024-05-02 10:00 (+3d) |
| 8 | Заполнение базы данных | 2024-04-30 → 2024-05-02 10:00 (+2d) | 2024-05-17 → 2024-05-21 13:00 (+4d) |
| 9 | Программирование завершено | 2024-06-05 → 2024-06-07 17:00 (+2d) | 2024-06-05 → 2024-06-07 17:00 (+2d) |
| 10 | **Тестирование и отладка** | 2024-05-30 → 2024-05-31 17:00 (+1d) | 2024-07-04 → 2024-07-09 15:00 (+5d) |
| 11 | Подготовка тестовых наборов данных | 2024-05-30 → 2024-05-31 17:00 (+1d) | 2024-06-13 → 2024-06-18 11:00 (+5d) |
| 12 | Тестирование и исправление ошибок | 2024-06-14 → 2024-06-18 11:00 (+4d) | 2024-07-04 → 2024-07-09 15:00 (+5d) |
| 13 | Отладка завершена | 2024-07-04 → 2024-07-09 15:00 (+5d) | 2024-07-04 → 2024-07-09 15:00 (+5d) |
| 14 | **Разработка документации** | 2024-05-16 → 2024-05-17 14:00 (+1d) | 2024-06-20 → 2024-06-25 11:00 (+5d) |
| 15 | Составление программной документации | 2024-05-16 → 2024-05-17 14:00 (+1d) | 2024-05-29 → 2024-05-31 17:00 (+2d) |
| 16 | Составление пользовательской документации | 2024-05-30 → 2024-05-31 17:00 (+1d) | 2024-06-20 → 2024-06-25 11:00 (+5d) |
| 17 | Конец проекта | 2024-06-20 → 2024-06-25 11:00 (+5d) | 2024-06-20 → 2024-06-25 11:00 (+5d) |

## Version 7 (saved 2024-04-02, file 09.mpp)

Note of the change: 4 курс

Last finish 2024-07-09 → 2024-06-28 (-11d).

Changed:

| ID | Task | Start | Finish | Duration | Other |
| --- | --- | --- | --- | --- | --- |
| 1 | **Проект 1** |  | 2024-07-09 15:00 → 2024-06-28 17:40 (-11d) | 66d → 59.33d |  |
| 3 | **Программирование** |  | 2024-06-07 17:00 → 2024-05-30 10:40 (-8d) | 45d → 38.33d |  |
| 5 | Разработка интерфейса |  | 2024-05-17 13:00 → 2024-05-07 12:40 (-10d) | 20d → 10d | resources Ведущий программист; Программист 1 → Ведущий программист; Программист 1; Программист 2; Программист 3 |
| 6 | Разработка модулей обработки данных | 2024-05-17 14:00 → 2024-05-07 12:40 (-10d) | 2024-06-07 17:00 → 2024-05-30 10:40 (-8d) |  |  |
| 9 | Программирование завершено | 2024-06-07 17:00 → 2024-05-30 10:40 (-8d) | 2024-06-07 17:00 → 2024-05-30 10:40 (-8d) |  |  |
| 10 | **Тестирование и отладка** | 2024-05-31 17:00 → 2024-05-22 16:40 (-9d) | 2024-07-09 15:00 → 2024-06-28 17:40 (-11d) |  |  |
| 11 | Подготовка тестовых наборов данных | 2024-05-31 17:00 → 2024-05-22 16:40 (-9d) | 2024-06-18 11:00 → 2024-06-06 10:40 (-12d) |  |  |
| 12 | Тестирование и исправление ошибок | 2024-06-18 11:00 → 2024-06-06 10:40 (-12d) | 2024-07-09 15:00 → 2024-06-28 17:40 (-11d) |  |  |
| 13 | Отладка завершена | 2024-07-09 15:00 → 2024-06-28 17:40 (-11d) | 2024-07-09 15:00 → 2024-06-28 17:40 (-11d) |  |  |

## Version 8 (data date 2024-06-01, saved 2024-04-02, file 10.mpp)

Note of the change: 4 курс

Last finish 2024-06-28 → 2024-07-23 (+25d). Complete tasks 0 → 10.

Added:

| ID | Task | Duration | Start | Finish | Constraint | Resources |
| --- | --- | --- | --- | --- | --- | --- |
| 18 | **Профилактика оборудования** | 27.25d | 2024-04-23 A | 2024-06-04 |  |  |
| 19 | Профилактика оборудования 1 | 3h | 2024-04-23 A | 2024-04-23 A | start no earlier than 2024-04-23 | Специалист профилактики |
| 20 | Профилактика оборудования 2 | 3h | 2024-05-07 A | 2024-05-07 A | start no earlier than 2024-05-07 | Специалист профилактики |
| 21 | Профилактика оборудования 3 | 3h | 2024-05-21 A | 2024-05-21 A | start no earlier than 2024-05-21 | Специалист профилактики |
| 22 | Профилактика оборудования 4 | 3h | 2024-06-04 | 2024-06-04 | start no earlier than 2024-06-04 | Специалист профилактики |

Removed: 18 Профилактика; 19 Профилактика 1; 20 Профилактика 2; 21 Профилактика 3; 22 Профилактика 4; 23 Профилактика 5; 24 Профилактика 6; 25 Профилактика 7

Changed:

| ID | Task | Start | Finish | Duration | Complete | Total float | Other |
| --- | --- | --- | --- | --- | --- | --- | --- |
| 1 | **Проект 1** | 2024-04-01 09:00 → 2024-04-01 A | 2024-06-28 17:40 → 2024-07-23 (+25d) | 59.33d → 76.34d | 0% → 53% |  | baseline start none → 2024-04-01; baseline finish none → 2024-06-13 |
| 2 | Начало реализации проекта | 2024-04-01 09:00 → 2024-04-01 A | 2024-04-01 09:00 → 2024-04-01 A |  | 0% → 100% | 0d → none | baseline start none → 2024-04-01; baseline finish none → 2024-04-01 |
| 3 | **Программирование** | 2024-04-02 09:00 → 2024-04-02 A | 2024-05-30 10:40 → 2024-07-02 (+33d) | 38.33d → 60.34d | 0% → 78% |  | resources Сервер базы данных → Сервер базы данных [230%]; baseline start none → 2024-04-02; baseline finish none → 2024-05-21 |
| 4 | Постановка задачи | 2024-04-02 09:00 → 2024-04-02 A | 2024-04-09 12:00 → 2024-04-08 A (-1d) |  | 0% → 100% | 0d → none | baseline start none → 2024-04-02; baseline finish none → 2024-04-08 |
| 5 | Разработка интерфейса | 2024-04-09 12:00 → 2024-04-09 A | 2024-05-07 12:40 → 2024-04-22 A (-15d) |  | 0% → 100% | 0d → none | resources Ведущий программист; Программист 1; Программист 2; Программист 3 → Ведущий программист; Программист 1; baseline start none → 2024-04-09; baseline finish none → 2024-04-22 |
| 6 | Разработка модулей обработки данных | 2024-05-07 12:40 → 2024-05-01 A (-6d) | 2024-05-30 10:40 → 2024-05-24 A (-6d) |  | 0% → 100% | 0d → none | baseline start none → 2024-04-23; baseline finish none → 2024-05-16 |
| 7 | Разработка базы данных | 2024-04-09 12:00 → 2024-04-09 A | 2024-05-02 10:00 → 2024-04-25 A (-7d) | 15d → 12d | 0% → 100% | 3.33d → none | resources Аналитик; Программист 1 → Аналитик; Программист 1; Программист 2; Программист 3; baseline start none → 2024-04-09; baseline finish none → 2024-04-30 |
| 8 | Заполнение базы данных | 2024-05-02 10:00 → 2024-04-26 A (-6d) | 2024-05-21 13:00 → 2024-07-02 (+42d) |  |  | 3.33d → 0d | baseline start none → 2024-05-02; baseline finish none → 2024-05-21 |
| 9 | Программирование завершено | 2024-05-30 10:40 → 2024-07-02 (+33d) | 2024-05-30 10:40 → 2024-07-02 (+33d) |  |  |  | baseline start none → 2024-05-21; baseline finish none → 2024-05-21 |
| 10 | **Тестирование и отладка** | 2024-05-22 16:40 → 2024-05-30 A (+8d) | 2024-06-28 17:40 → 2024-07-23 (+25d) | 25d → 36.12d |  |  | baseline start none → 2024-05-14; baseline finish none → 2024-06-13 |
| 11 | Подготовка тестовых наборов данных | 2024-05-22 16:40 → 2024-05-30 A (+8d) | 2024-06-06 10:40 → 2024-07-02 (+26d) | 10d → 5d |  |  | baseline start none → 2024-05-14; baseline finish none → 2024-05-21 |
| 12 | Тестирование и исправление ошибок | 2024-06-06 10:40 → 2024-07-02 (+26d) | 2024-06-28 17:40 → 2024-07-23 (+25d) |  |  |  | baseline start none → 2024-05-21; baseline finish none → 2024-06-13 |
| 13 | Отладка завершена | 2024-06-28 17:40 → 2024-07-23 (+25d) | 2024-06-28 17:40 → 2024-07-23 (+25d) |  |  |  | baseline start none → 2024-06-13; baseline finish none → 2024-06-13 |
| 14 | **Разработка документации** | 2024-05-17 14:00 → 2024-05-14 A (-3d) | 2024-06-25 11:00 → 2024-06-20 (-5d) |  | 0% → 40% | 3.33d → 22.72d | baseline start none → 2024-05-17; baseline finish none → 2024-06-03 |
| 15 | Составление программной документации | 2024-05-17 14:00 → 2024-05-14 A (-3d) | 2024-05-31 17:00 → 2024-05-28 A (-3d) |  | 0% → 100% | 3.33d → none | baseline start none → 2024-05-17; baseline finish none → 2024-05-31 |
| 16 | Составление пользовательской документации | 2024-05-31 17:00 → 2024-05-28 A (-3d) | 2024-06-25 11:00 → 2024-06-20 (-5d) |  |  | 3.33d → 22.72d | baseline start none → 2024-05-31; baseline finish none → 2024-06-03 |
| 17 | Конец проекта | 2024-06-25 11:00 → 2024-05-29 A (-27d) | 2024-06-25 11:00 → 2024-05-29 A (-27d) |  | 0% → 100% | 3.33d → none | baseline start none → 2024-06-03; baseline finish none → 2024-06-03 |
